Schedule from a web Gantt chart, 2022-07-12 to 2027-02-05.
Saturdays and Sundays are off

## Schedule

| ID | WBS | Task | Duration | Start | Finish | Predecessors | Status | inPeople |
| --- | --- | --- | --- | --- | --- | --- | --- | --- |
| 2 | 1 | **Tasks Dependent on Function Team** | 444d | 2022-07-12 | 2024-03-22 |  |  |  |
| 3 | 1.1 | (User&eBao BA) BSD Signoff | 30d | 2024-01-01 | 2024-02-09 |  |  |  |
| 4 | 1.2 | (eBao AA) Table Design of Customization | 30d | 2024-02-12 | 2024-03-22 | 3 | waiting |  |
| 5 | 1.3 | (eBao BA&AD) Code/Master Table Configuration | 1d | 2022-07-12 | 2022-07-12 |  |  |  |
| 6 | 1.4 | (User&eBao BA) Product Set-up | 1d | 2022-07-12 | 2022-07-12 |  |  |  |
| 7 | 1.5 | (User&eBao BA) Product Mappping | 1d | 2022-07-12 | 2022-07-12 |  |  |  |
| 8 | 1.6 | (eBao Tester) Function Test | 1d | 2022-07-12 | 2022-07-12 |  |  |  |
| 9 | 1.7 | (User) Function UAT | 1d | 2022-07-12 | 2022-07-12 |  |  |  |
| 10 | 2 | **Data Migration** | 750d | 2024-03-25 | 2027-02-05 |  |  |  |
| 11 | 2.1 | **Activity on Baseline Template (clear all DVR and BVR-NonProd issues)** | 350d | 2024-08-01 | 2025-12-03 |  |  |  |
| 12 | 2.1.1 | CHUBB-1 CAPSIL | 140d | 2024-08-01 | 2025-02-12 |  |  | Client=; eBao=0.8 |
| 13 | 2.1.2 | System-6 | 70d | 2025-02-13 | 2025-05-21 | 12 | waiting | Client=; eBao<=0.5 |
| 14 | 2.1.3 | CAPSIL | 70d | 2025-05-22 | 2025-08-27 | 13 | waiting | Client=; eBao<=0.5 |
| 15 | 2.1.4 | IPAS | 70d | 2025-08-28 | 2025-12-03 | 14 | waiting | Client=; eBao<=0.5 |
| 16 | 2.2 | **Requirement Phase** | 15d | 2026-01-01 | 2026-01-21 |  |  |  |
| 17 | 2.2.1 | DM Approach | 1d | 2026-01-01 | 2026-01-01 |  |  |  |
| 18 | 2.2.2 | **Data Migration Scope** | 13d | 2026-01-02 | 2026-01-20 |  |  |  |
| 19 | 2.2.2.1 | Initial Discussion & Draft Version | 2d | 2026-01-02 | 2026-01-05 | 17 | waiting |  |
| 20 | 2.2.2.2 | High-level Solution for Out-of-Scope Items | 10d | 2026-01-06 | 2026-01-19 | 19 | waiting |  |
| 21 | 2.2.2.3 | Scope Sign-off | 1d | 2026-01-20 | 2026-01-20 | 20 | waiting |  |
| 22 | 2.2.3 | DM Plan | 1d | 2026-01-21 | 2026-01-21 | 21 | waiting |  |
| 23 | 2.3 | **Design Phase / Baseline** | 29d | 2024-08-01 | 2024-09-10 |  | waiting |  |
| 24 | 2.3.1 | **Baseline Template & BVR Introduction and Initial Mapping** | 29d | 2024-08-01 | 2024-09-10 |  | waiting |  |
| 25 | 2.3.1.1 | Policy - policy/benefit master | 10d | 2024-08-01 | 2024-08-14 | 12FS-140d | waiting |  |
| 26 | 2.3.1.2 | Party | 3d | 2024-08-15 | 2024-08-19 | 25 | waiting |  |
| 27 | 2.3.1.3 | Policy - policy roles | 3d | 2024-08-20 | 2024-08-22 | 26 | waiting |  |
| 28 | 2.3.1.4 | Policy - others | 3d | 2024-08-23 | 2024-08-27 | 27 | waiting |  |
| 29 | 2.3.1.5 | ILP | 5d | 2024-08-28 | 2024-09-03 | 28 | waiting |  |
| 30 | 2.3.1.6 | Policy Account | 5d | 2024-09-04 | 2024-09-10 | 29 | waiting |  |

| ID | WBS | Task | Duration | Start | Finish | Predecessors | Status |
| --- | --- | --- | --- | --- | --- | --- | --- |
| 31 | 2.4 | **Design Phase / Customization** | 40d | 2024-03-25 | 2024-05-17 |  |  |
| 32 | 2.4.1 | Template Change | 20d | 2024-03-25 | 2024-04-19 | 4 | waiting |
| 33 | 2.4.2 | BVR Enhancement | 20d | 2024-04-22 | 2024-05-17 | 32 | waiting |
| 34 | 2.5 | **(Client IT) Template Data Delivery and Verification** | 116d | 2024-04-29 | 2024-10-07 |  |  |
| 35 | 2.5.1 | Delivery of All Customized Template | 1d | 2024-04-29 | 2024-04-29 | 32FS+5d | waiting |
| 36 | 2.5.2 | Pass Rate of Staging Data > 60% | 20d | 2024-05-21 | 2024-06-17 | 35FS+15d | waiting |
| 37 | 2.5.3 | Pass Rate of Staging Data > 90% | 20d | 2024-07-16 | 2024-08-12 | 36FS+20d | waiting |
| 38 | 2.5.4 | Pass Rate of Staging Data = 100% | 20d | 2024-09-10 | 2024-10-07 | 37FS+20d | waiting |
| 39 | 2.6 | **Development Phase** | 65d | 2026-03-19 | 2026-06-17 |  |  |
| 40 | 2.6.1 | DC Development - Coversion Script | 30d | 2026-03-19 | 2026-04-29 |  | waiting |
| 41 | 2.6.2 | DC Development - Validation Rules | 10d | 2026-04-30 | 2026-05-13 | 40 | waiting |
| 42 | 2.6.3 | DC Development - Reconciliation | 10d | 2026-05-14 | 2026-05-27 | 41 | waiting |
| 43 | 2.6.4 | DC Development - Trial Run with Real Data | 35d | 2026-04-30 | 2026-06-17 | 40 | waiting |
| 44 | 2.7 | **DM Test at eBao Side** | 90d | 2026-05-14 | 2026-09-16 |  |  |
| 45 | 2.7.1 | Target Data Validation | 30d | 2026-05-14 | 2026-06-24 | 41 | waiting |
| 46 | 2.7.2 | Target Data Reconciliation | 30d | 2026-06-25 | 2026-08-05 | 45 | waiting |
| 47 | 2.7.3 | Recalculation Verification | 40d | 2026-05-14 | 2026-07-08 | 41 | waiting |
| 48 | 2.7.4 | Batch Jobs Running on Migrated Data | 20d | 2026-07-09 | 2026-08-05 | 47 | waiting |
| 49 | 2.7.5 | **Function Test on Migrated Data (DVT)** | 60d | 2026-06-25 | 2026-09-16 |  |  |
| 50 | 2.7.5.1 | Function Test (Pass Rate > 70%) | 30d | 2026-06-25 | 2026-08-05 | 45 | waiting |
| 51 | 2.7.5.2 | Functional Test with Migrated Data (Pass Rate > 85%) | 15d | 2026-08-06 | 2026-08-26 | 50 | waiting |
| 52 | 2.7.5.3 | Functional Test with Migrated Data (Pass Rate > 95%) | 15d | 2026-08-27 | 2026-09-16 | 51 | waiting |
| 53 | 2.8 | **DM Test at Client Side** | 90d | 2026-08-06 | 2026-12-09 |  |  |
| 54 | 2.8.1 | (Client BA) Comparison Check on UI | 30d | 2026-08-06 | 2026-09-16 | 50 | waiting |
| 55 | 2.8.2 | (Client BA/IT) Pre DC UAT | 30d | 2026-08-06 | 2026-09-16 | 50 | waiting |
| 56 | 2.8.3 | (Client User) DC UAT | 60d | 2026-09-17 | 2026-12-09 | 52, 55 | waiting |

| ID | WBS | Task | Duration | Start | Finish | Predecessors | Status |
| --- | --- | --- | --- | --- | --- | --- | --- |
| 57 | 2.9 | **Go Live** | 14d | 2026-12-08 | 2026-12-25 |  |  |
| 58 | 2.9.1 | Rehearsal for CutOver | 12d | 2026-12-08 | 2026-12-23 | 56FS-2d | waiting |
| 59 | 2.9.2 | CutOver | 2d | 2026-12-24 | 2026-12-25 | 58 | waiting |
| 60 | 2.10 | Post-Go-Live Support | 30d | 2026-12-28 | 2027-02-05 | 59 | waiting |
